# Разработка карты города

Schedule from MS Project, 2023-03-01 to 2023-09-20, costs in ₽.
Проект: создание карты города на основе собственного модуля отображения / Длительность: 6 месяцев / Бюджет: 50 000 рублей / Количественный состав команды: 16 человек

## Calendars

- Стандартный: Mon-Fri 09:00-13:00, 14:00-18:00; Sat-Sun off. Exceptions (off unless hours are given): 2023-03-07 09:00-13:00, 14:00-17:00 (Сокращенный день), 2023-03-08 (Международный женский день), 2023-05-01 (Праздник Весны и Труда), 2023-05-08 (С воскресенья 8 января на понедельник 8 мая), 2023-05-09 (День Победы), 2023-06-12 (День России).

## Resources

| Resource | Group | Rate | Cost per use |
| --- | --- | --- | --- |
| Ведущий программист | Программирование | 10 | 100 |
| Программист #1 | Программирование | 7 | 50 |
| Программист #2 | Программирование | 7 | 50 |
| Программист #3 | Программирование | 7 | 50 |
| Программист #4 | Программирование | 7 | 50 |
| Системный аналитик | Аналитика | 20 | 300 |
| Художник-дизайнер | Дизайн | 8 | 70 |
| Технический писатель | Документация | 5 | 20 |
| Web-дизайнер | Internet | 7 | 50 |
| 3D аниматор | Дизайн | 8 | 70 |
| Мультимедиа-корреспондент | М-медиа | 3 | 20 |
| Наборщик данных #1 | Ввод данных | 2 | 10 |
| Наборщик данных #2 | Ввод данных | 2 | 10 |
| Наборщик данных #3 | Ввод данных | 2 | 10 |
| Наборщик данных #4 | Ввод данных | 2 | 10 |
| Наборщик данных #5 | Ввод данных | 2 | 10 |
| Сервер | Аренда | 2 |  |

## Schedule

| ID | WBS | Task | Type | Duration | Start | Finish | Predecessors | Total slack | Free slack | Resources | Work | Cost |
| --- | --- | --- | --- | --- | --- | --- | --- | --- | --- | --- | --- | --- |
| 1 | 1 | Начало проекта | milestone | 0w | 2023-03-01 09:00 | 2023-03-01 09:00 |  | 70d | 0d |  |  |  |
| 2 | 2 | **Создание интерфейса** |  | 110d | 2023-03-01 09:00 | 2023-08-09 10:00 | 1 | 0d |  |  | 560h | 5,550 |
| 3 | 2.1 | **Разработка дизайна интерфейса** |  | 25d | 2023-03-01 09:00 | 2023-04-06 10:00 |  | 70d | 0d |  | 320h | 2,770 |
| 4 | 2.1.1 | Разработка 2D графических элементов |  | 3w | 2023-03-01 09:00 | 2023-03-23 10:00 |  | 70d | 0d | Художник-дизайнер | 120h | 1,030 |
| 5 | 2.1.2 | Разработка 3D графических элементов |  | 2w | 2023-03-01 09:00 | 2023-03-16 10:00 | 4SS | 70d | 0d | 3D аниматор | 80h | 710 |
| 6 | 2.1.3 | Создание заставки |  | 3w | 2023-03-16 10:00 | 2023-04-06 10:00 | 5 | 70d |  | 3D аниматор | 120h | 1,030 |
| 7 | 2.2 | Программирование интерфейса |  | 3w | 2023-07-19 10:00 | 2023-08-09 10:00 | 3, 12 | 0d |  | Программист #3; Программист #4 | 240h | 1,780 |
| 8 | 3 | **Построение базы объектов** |  | 85d | 2023-03-23 10:00 | 2023-07-26 10:00 |  | 40d |  | Сервер | 5720h | 15,530 |
| 9 | 3.1 | Анализ и построение структуры базы объектов |  | 2w | 2023-03-23 10:00 | 2023-04-06 10:00 |  | 40d | 0d | Системный аналитик | 80h | 1,900 |
| 10 | 3.2 | Программирование средств обработки базы объектов |  | 3w | 2023-04-06 10:00 | 2023-04-27 10:00 | 9 | 40d | 0d | Программист #3; Программист #4 | 240h | 1,780 |
| 11 | 3.3 | Наполнение базы объектов |  | 12w | 2023-04-27 10:00 | 2023-07-26 10:00 | 10 | 40d |  | Наборщик данных #1; Наборщик данных #5; Наборщик данных #2; Наборщик данных #3; Наборщик данных #4 | 2400h | 4,850 |
| 12 | 4 | **Создание ядра GIS** |  | 95d | 2023-03-01 09:00 | 2023-07-19 10:00 |  | 0d |  |  | 1880h | 18,680 |
| 13 | 4.1 | Анализ и проектирование ядра |  | 3w | 2023-03-01 09:00 | 2023-03-23 10:00 |  | 0d |  | Ведущий программист; Системный аналитик | 240h | 4,000 |
| 14 | 4.2 | Создание модели ядра |  | 5w | 2023-03-23 10:00 | 2023-04-27 10:00 | 13 | 0d |  | Программист #1; Ведущий программист | 400h | 3,550 |
| 15 | 4.3 | Тестирование модели ядра |  | 1w | 2023-04-27 10:00 | 2023-05-05 10:00 | 14 | 0d |  | Программист #1 | 40h | 330 |
| 16 | 4.4 | Создание рабочей версии ядра |  | 10w | 2023-05-05 10:00 | 2023-07-19 10:00 | 15 | 0d |  | Программист #1; Ведущий программист; Программист #2 | 1200h | 9,800 |
| 17 | 5 | Создание мультимедиа-наполнения |  | 6w | 2023-04-06 10:00 | 2023-05-23 10:00 | 3 | 85d | 83d | Мультимедиа-корреспондент | 240h | 740 |
| 18 | 6 | Создание справочной системы |  | 2w | 2023-08-18 10:00 | 2023-09-01 10:00 | 7 | 13d | 18d | Технический писатель | 80h | 420 |
| 19 | 7 | **Создание руководства пользователя** |  | 17d | 2023-07-26 10:00 | 2023-08-18 10:00 | 7FS-10d | 0d |  |  | 160h | 1,010 |
| 20 | 7.1 | Разработка дизайна руководства |  | 1w | 2023-07-26 10:00 | 2023-08-02 10:00 |  | 0d |  | Художник-дизайнер | 40h | 390 |
| 21 | 7.2 | Написание руководства пользователя |  | 3w | 2023-07-28 10:00 | 2023-08-18 10:00 | 20SS+2d | 0d |  | Технический писатель | 120h | 620 |
| 22 | 8 | **Создание web-сайта и поддержки** |  | 23d | 2023-07-28 10:00 | 2023-08-30 10:00 |  | 0d |  |  | 248h | 2,106 |
| 23 | 8.1 | Разработка структуры сайта |  | 1d | 2023-07-28 10:00 | 2023-07-31 10:00 | 21SS | 0d |  | Web-дизайнер | 8h | 106 |
| 24 | 8.2 | Разработка дизайна сайта |  | 1.4w | 2023-07-31 10:00 | 2023-08-09 10:00 | 23 | 0d |  | 3D аниматор; Web-дизайнер; Художник-дизайнер | 120h | 1,110 |
| 25 | 8.3 | Наполнение сайта |  | 3w | 2023-08-09 10:00 | 2023-08-30 10:00 | 24 | 0d |  | Web-дизайнер | 120h | 890 |
| 26 | 9 | Тестирование сайта |  | 4w | 2023-08-23 10:00 | 2023-09-20 10:00 | 22FS-1w | 0d |  | Программист #1; Ведущий программист; Программист #2 | 480h | 4,040 |
| 27 | 10 | Сдача сайта в эксплуатацию | milestone | 0w | 2023-09-20 10:00 | 2023-09-20 10:00 | 26 | 0d |  |  |  |  |

| ID | WBS | Task | Duration | Start | Finish | Total slack | Constraint | Resources | Work | Cost |
| --- | --- | --- | --- | --- | --- | --- | --- | --- | --- | --- |
| 28 | 11 | **Совещание** | 139.89d | 2023-03-01 09:00 | 2023-09-20 09:08 | 0.11d |  |  | 29h | 18,522.71 |
| 29 | 11.1 | Совещание 1 | 0.14h | 2023-03-01 09:00 | 2023-03-01 09:08 | 139.98d | start no earlier than 2023-03-01 09:00 | 3D аниматор; Web-дизайнер; Ведущий программист; Мультимедиа-корреспондент; Системный аналитик; Технический писатель; Художник-дизайнер | 1h | 638.71 |
| 30 | 11.2 | Совещание 2 | 0.14h | 2023-03-15 09:00 | 2023-03-15 09:08 | 131.11d | start no earlier than 2023-03-15 09:00 | 3D аниматор; Web-дизайнер; Ведущий программист; Мультимедиа-корреспондент; Системный аналитик; Технический писатель; Художник-дизайнер | 1h | 638.71 |
| 31 | 11.3 | Совещание 3 | 0.14h | 2023-03-22 09:00 | 2023-03-22 09:08 | 126.11d | start no earlier than 2023-03-22 09:00 | 3D аниматор; Web-дизайнер; Ведущий программист; Мультимедиа-корреспондент; Системный аналитик; Технический писатель; Художник-дизайнер | 1h | 638.71 |
| 32 | 11.4 | Совещание 4 | 0.14h | 2023-03-29 09:00 | 2023-03-29 09:08 | 121.11d | start no earlier than 2023-03-29 09:00 | 3D аниматор; Web-дизайнер; Ведущий программист; Мультимедиа-корреспондент; Системный аналитик; Технический писатель; Художник-дизайнер | 1h | 638.71 |
| 33 | 11.5 | Совещание 5 | 0.14h | 2023-04-05 09:00 | 2023-04-05 09:08 | 116.11d | start no earlier than 2023-04-05 09:00 | 3D аниматор; Web-дизайнер; Ведущий программист; Мультимедиа-корреспондент; Системный аналитик; Технический писатель; Художник-дизайнер | 1h | 638.71 |
| 34 | 11.6 | Совещание 6 | 0.14h | 2023-04-12 09:00 | 2023-04-12 09:08 | 111.11d | start no earlier than 2023-04-12 09:00 | 3D аниматор; Web-дизайнер; Ведущий программист; Мультимедиа-корреспондент; Системный аналитик; Технический писатель; Художник-дизайнер | 1h | 638.71 |
| 35 | 11.7 | Совещание 7 | 0.14h | 2023-04-19 09:00 | 2023-04-19 09:08 | 106.11d | start no earlier than 2023-04-19 09:00 | 3D аниматор; Web-дизайнер; Ведущий программист; Мультимедиа-корреспондент; Системный аналитик; Технический писатель; Художник-дизайнер | 1h | 638.71 |
| 36 | 11.8 | Совещание 8 | 0.14h | 2023-04-26 09:00 | 2023-04-26 09:08 | 101.11d | start no earlier than 2023-04-26 09:00 | 3D аниматор; Web-дизайнер; Ведущий программист; Мультимедиа-корреспондент; Системный аналитик; Технический писатель; Художник-дизайнер | 1h | 638.71 |
| 37 | 11.9 | Совещание 9 | 0.14h | 2023-05-03 09:00 | 2023-05-03 09:08 | 97.11d | start no earlier than 2023-05-03 09:00 | 3D аниматор; Web-дизайнер; Ведущий программист; Мультимедиа-корреспондент; Системный аналитик; Технический писатель; Художник-дизайнер | 1h | 638.71 |
| 38 | 11.10 | Совещание 10 | 0.14h | 2023-05-10 09:00 | 2023-05-10 09:08 | 94.11d | start no earlier than 2023-05-10 09:00 | 3D аниматор; Web-дизайнер; Ведущий программист; Мультимедиа-корреспондент; Системный аналитик; Технический писатель; Художник-дизайнер | 1h | 638.71 |
| 39 | 11.11 | Совещание 11 | 0.14h | 2023-05-17 09:00 | 2023-05-17 09:08 | 89.11d | start no earlier than 2023-05-17 09:00 | 3D аниматор; Web-дизайнер; Ведущий программист; Мультимедиа-корреспондент; Системный аналитик; Технический писатель; Художник-дизайнер | 1h | 638.71 |
| 40 | 11.12 | Совещание 12 | 0.14h | 2023-05-24 09:00 | 2023-05-24 09:08 | 84.11d | start no earlier than 2023-05-24 09:00 | 3D аниматор; Web-дизайнер; Ведущий программист; Мультимедиа-корреспондент; Системный аналитик; Технический писатель; Художник-дизайнер | 1h | 638.71 |
| 41 | 11.13 | Совещание 13 | 0.14h | 2023-05-31 09:00 | 2023-05-31 09:08 | 79.11d | start no earlier than 2023-05-31 09:00 | 3D аниматор; Web-дизайнер; Ведущий программист; Мультимедиа-корреспондент; Системный аналитик; Технический писатель; Художник-дизайнер | 1h | 638.71 |
| 42 | 11.14 | Совещание 14 | 0.14h | 2023-06-07 09:00 | 2023-06-07 09:08 | 74.11d | start no earlier than 2023-06-07 09:00 | 3D аниматор; Web-дизайнер; Ведущий программист; Мультимедиа-корреспондент; Системный аналитик; Технический писатель; Художник-дизайнер | 1h | 638.71 |
| 43 | 11.15 | Совещание 15 | 0.14h | 2023-06-14 09:00 | 2023-06-14 09:08 | 70.11d | start no earlier than 2023-06-14 09:00 | 3D аниматор; Web-дизайнер; Ведущий программист; Мультимедиа-корреспондент; Системный аналитик; Технический писатель; Художник-дизайнер | 1h | 638.71 |
| 44 | 11.16 | Совещание 16 | 0.14h | 2023-06-21 09:00 | 2023-06-21 09:08 | 65.11d | start no earlier than 2023-06-21 09:00 | 3D аниматор; Web-дизайнер; Ведущий программист; Мультимедиа-корреспондент; Системный аналитик; Технический писатель; Художник-дизайнер | 1h | 638.71 |
| 45 | 11.17 | Совещание 17 | 0.14h | 2023-06-28 09:00 | 2023-06-28 09:08 | 60.11d | start no earlier than 2023-06-28 09:00 | 3D аниматор; Web-дизайнер; Ведущий программист; Мультимедиа-корреспондент; Системный аналитик; Технический писатель; Художник-дизайнер | 1h | 638.71 |
| 46 | 11.18 | Совещание 18 | 0.14h | 2023-07-05 09:00 | 2023-07-05 09:08 | 55.11d | start no earlier than 2023-07-05 09:00 | 3D аниматор; Web-дизайнер; Ведущий программист; Мультимедиа-корреспондент; Системный аналитик; Технический писатель; Художник-дизайнер | 1h | 638.71 |
| 47 | 11.19 | Совещание 19 | 0.14h | 2023-07-12 09:00 | 2023-07-12 09:08 | 50.11d | start no earlier than 2023-07-12 09:00 | 3D аниматор; Web-дизайнер; Ведущий программист; Мультимедиа-корреспондент; Системный аналитик; Технический писатель; Художник-дизайнер | 1h | 638.71 |
| 48 | 11.20 | Совещание 20 | 0.14h | 2023-07-19 09:00 | 2023-07-19 09:08 | 45.11d | start no earlier than 2023-07-19 09:00 | 3D аниматор; Web-дизайнер; Ведущий программист; Мультимедиа-корреспондент; Системный аналитик; Технический писатель; Художник-дизайнер | 1h | 638.71 |
| 49 | 11.21 | Совещание 21 | 0.14h | 2023-07-26 09:00 | 2023-07-26 09:08 | 40.11d | start no earlier than 2023-07-26 09:00 | 3D аниматор; Web-дизайнер; Ведущий программист; Мультимедиа-корреспондент; Системный аналитик; Технический писатель; Художник-дизайнер | 1h | 638.71 |
| 50 | 11.22 | Совещание 22 | 0.14h | 2023-08-02 09:00 | 2023-08-02 09:08 | 35.11d | start no earlier than 2023-08-02 09:00 | 3D аниматор; Web-дизайнер; Ведущий программист; Мультимедиа-корреспондент; Системный аналитик; Технический писатель; Художник-дизайнер | 1h | 638.71 |
| 51 | 11.23 | Совещание 23 | 0.14h | 2023-08-09 09:00 | 2023-08-09 09:08 | 30.11d | start no earlier than 2023-08-09 09:00 | 3D аниматор; Web-дизайнер; Ведущий программист; Мультимедиа-корреспондент; Системный аналитик; Технический писатель; Художник-дизайнер | 1h | 638.71 |
| 52 | 11.24 | Совещание 24 | 0.14h | 2023-08-16 09:00 | 2023-08-16 09:08 | 25.11d | start no earlier than 2023-08-16 09:00 | 3D аниматор; Web-дизайнер; Ведущий программист; Мультимедиа-корреспондент; Системный аналитик; Технический писатель; Художник-дизайнер | 1h | 638.71 |
| 53 | 11.25 | Совещание 25 | 0.14h | 2023-08-23 09:00 | 2023-08-23 09:08 | 20.11d | start no earlier than 2023-08-23 09:00 | 3D аниматор; Web-дизайнер; Ведущий программист; Мультимедиа-корреспондент; Системный аналитик; Технический писатель; Художник-дизайнер | 1h | 638.71 |
| 54 | 11.26 | Совещание 26 | 0.14h | 2023-08-30 09:00 | 2023-08-30 09:08 | 15.11d | start no earlier than 2023-08-30 09:00 | 3D аниматор; Web-дизайнер; Ведущий программист; Мультимедиа-корреспондент; Системный аналитик; Технический писатель; Художник-дизайнер | 1h | 638.71 |
| 55 | 11.27 | Совещание 27 | 0.14h | 2023-09-06 09:00 | 2023-09-06 09:08 | 10.11d | start no earlier than 2023-09-06 09:00 | 3D аниматор; Web-дизайнер; Ведущий программист; Мультимедиа-корреспондент; Системный аналитик; Технический писатель; Художник-дизайнер | 1h | 638.71 |
| 56 | 11.28 | Совещание 28 | 0.14h | 2023-09-13 09:00 | 2023-09-13 09:08 | 5.11d | start no earlier than 2023-09-13 09:00 | 3D аниматор; Web-дизайнер; Ведущий программист; Мультимедиа-корреспондент; Системный аналитик; Технический писатель; Художник-дизайнер | 1h | 638.71 |
| 57 | 11.29 | Совещание 29 | 0.14h | 2023-09-20 09:00 | 2023-09-20 09:08 | 0.11d | start no earlier than 2023-09-20 09:00 | 3D аниматор; Web-дизайнер; Ведущий программист; Мультимедиа-корреспондент; Системный аналитик; Технический писатель; Художник-дизайнер | 1h | 638.71 |
